Schedule from OmniPlan.
Project start 2017-04-20

## Resources

| Resource | Group |
| --- | --- |
| 资源 1 | staff |
| 设备 1 | equipment |
| 素材 1 | material |
| 群组 1 | group |
| 文安国 | staff |
| 罗亚东 | staff |
| 黄浩浩 | staff |
| 向勇 | staff |

## Schedule

| ID | WBS | Task | Predecessors | Constraint | Resources | Work |
| --- | --- | --- | --- | --- | --- | --- |
| 1 | 1 | **编码** |  |  |  |  |
| 2 | 1.1 | **阶段一：开放能力开发** |  |  |  |  |
| 3 | 1.1.1 | 镜像管理 |  | start no earlier than 2017-05-03 | 向勇 | 8h |
| 4 | 1.1.2 | 镜像操作流程测试 |  | start no earlier than 2017-05-03 | 文安国 | 8h |
| 5 | 1.1.3 | 服务管理 |  | start no earlier than 2017-05-04 | 向勇 | 16h |
| 6 | 1.2 | **阶段二：整体流程测试** |  |  |  |  |
| 7 | 1.2.1 | CI/CD持续集成 |  | start no earlier than 2017-05-02 | 文安国 | 16h |
| 8 | 1.2.2 | mesos+marathon部署测试 |  | start no earlier than 2017-05-04 | 罗亚东 | 16h |
| 9 | 1.2.3 | 日志收集流程测试 | 7 | start no earlier than 2017-05-04 | 文安国 | 16h |
| 10 | 1.2.4 | 性能监控流程测试 | 9 | start no earlier than 2017-05-04 | 文安国 | 16h |
| 11 | 1.3 | 阶段三：项目管理开发 |  |  |  | 8h |
| 12 | 1.4 | 阶段四：mesos应用部署 |  | start no earlier than 2017-05-05 |  | 8h |
| 13 | 1.5 | 阶段五：整体集成 |  | start no earlier than 2017-05-05 |  | 8h |
| 14 | 2 | 测试 |  |  |  | 8h |

Notes:
- 3: 包括镜像的展现，信息编辑等 / 周一完成，镜像展现，服务展现，首页，项目创建，部署等
- 4: 包括镜像的打推送到仓库，删除，下载使用等流程
- 5: 服务的展现，服务详情的编辑
- 7: 包括项目的开发，代码提交，单元测试，镜像打包
